# CTRP2-ProjectSchedule

Schedule from MS Project, 2011-08-10 to 2012-11-06, A marks actual dates.

## Calendars

- Standard: Mon-Fri 08:00-12:00, 13:00-17:00; Sat-Sun off.

## Resources

| Resource |
| --- |
| Bala |
| Smita |
| Nelli |
| Paula |
| Hugh |
| Steve Matyas |
| Todd |
| Steve L |
| Sohal |
| Harsha |
| Naveen |
| BDA Team |
| Systems Team |
| QA3 |
| QA4 |
| QA5 |
| Vrushali |
| Max |
| VCDE |
| Anu |
| rushali |
| CTEP |
| caXchange |
| C3PR |
| caAERS |
| PSC |
| LV |
| BDA |
| "C3PR |
| Documentation |
| caGrid |
| QA |
| BAM |
| Edmond |
| NCI |
| SAIC-F |
| Web Team |
| Bill Dyer |
| CCTS Team |
| John S |
| Patrick |
| Architects |
| Christo |
| John |
| Rhett |
| Nellie |
| Steve |
| Kalpesh |
| David L |
| Stevel L |
| Kumar C |
| Gia |
| Wendy |
| Raj |
| Steve M |
| Lauren |
| Systems |
| CTRO |
| Hannes |
| SMEs |
| Gisele |
| Joe |
| CTRP Dev team |
| CBIIT |
| All |
| Analysts |
| TBD |
| Charles |
| ESST |
| Developers |
| Lisa |
| Christophe |
| Krishna |
| QA1 |
| QA2 |
| David |
| Security |
| Arch |
| Tech Leads |
| Paula B |
| Kalpana |
| KK |
| Abe |
| Kim |
| Vijay |
| CAT |
| George |
| Larry |
| Michael O |
| Resource 1 |
| Resource 2 |
| Resource3 |
| Resource 4 |
| Resource 5 |
| Gisele S |
| Dianne R |
| HR |
| NA |
| SL |
| ScenPro |
| 5AM |
| TP |
| EM |
| KE |
| JM |
| DL |
| Paul |
| Michael |
| Eilis |
| Team |
| Dev team |
| Ram P |
| NIH 508 team |
| Bryan |
| Bill D |
| Quy |
| Andrew |
| Rashmi |

## Schedule

| ID | WBS | Task | Type | Duration | Start | Finish | Predecessors | Complete | Remaining | Total slack | Constraint | Resources | Work | Actual work |
| --- | --- | --- | --- | --- | --- | --- | --- | --- | --- | --- | --- | --- | --- | --- |
| 1 | 1 | **CAARRAY 2.x** |  | 325d | 2011-08-10 A | 2012-11-06 |  | 59% | 131.89d | 0d | start no earlier than 2011-08-03 |  | 4752h | 402.61h |
| 2 | 1.1 | **2.4.1** |  | 38d | 2011-08-10 A | 2011-09-30 |  | 99% | 0d | 0d | start no earlier than 2011-08-10 |  | 912h | 4.8h |
| 3 | 1.1.1 | **2.4.1 RC6** |  | 25d | 2011-08-10 A | 2011-09-13 |  | 99% | 0d | 0d |  | Andrew; Quy; Rashmi | 600h |  |
| 4 | 1.1.1.1 | caArray Importer: Regression test on local tier |  | 20d | 2011-08-10 A | 2011-09-06 A |  | 100% |  |  |  |  |  |  |
| 5 | 1.1.1.2 | caArray Importer: Test import on local tier |  | 20d | 2011-08-10 A | 2011-09-06 A |  | 100% |  |  |  |  |  |  |
| 6 | 1.1.1.3 | API Partner Testing on STAGE |  | 20d | 2011-08-10 A | 2011-09-06 A |  | 100% |  |  |  |  |  |  |
| 7 | 1.1.1.4 | Section 508 compliance: Run scan and issue-manage. |  | 20d | 2011-08-10 A | 2011-09-06 A |  | 100% |  |  |  |  |  |  |
| 8 | 1.1.1.5 | Write Grid client to get expt and hyb counts for Ken Buetow |  | 20d | 2011-08-10 A | 2011-09-06 A |  | 100% |  |  |  |  |  |  |
| 9 | 1.1.1.6 | Write and test QTP automated script to load TCGA data |  | 20d | 2011-08-10 A | 2011-09-06 A |  | 100% |  |  |  |  |  |  |
| 10 | 1.1.1.7 | Bug fix for ARRAY-2059 that is a blocker for the TCGA data load |  | 20d | 2011-08-10 A | 2011-09-06 A |  | 100% |  |  |  |  |  |  |
| 11 | 1.1.1.8 | Section 508 compliance: Fix ARRAY-1911 to get 90% score |  | 20d | 2011-08-10 A | 2011-09-06 A |  | 100% |  |  |  |  |  |  |
| 12 | 1.1.1.9 | Decide on solution to TCGA data load issue |  | 20d | 2011-08-10 A | 2011-09-06 A |  | 100% |  |  |  |  |  |  |
| 13 | 1.1.1.10 | Bug fix for ARRAY-2055 |  | 20d | 2011-08-10 A | 2011-09-06 A |  | 100% |  |  |  |  |  |  |
| 14 | 1.1.1.11 | Temporary bug fix for ARRAY-2053 |  | 25d | 2011-08-10 A | 2011-09-13 A |  | 100% |  |  |  |  |  |  |
| 15 | 1.1.1.12 | Test bug fixes on QA tier |  | 25d | 2011-08-10 A | 2011-09-13 A |  | 100% |  |  |  |  |  |  |
| 16 | 1.1.2 | **2.4.1 Deployment** |  | 13d | 2011-09-14 A | 2011-09-30 | 3 | 99% | 0d | 0d |  | Rashmi; Andrew; Quy | 312h | 4.8h |
| 17 | 1.1.2.1 | Regression testing on QA tier |  | 5d | 2011-09-14 A | 2011-09-20 A |  | 100% |  |  |  |  |  |  |
| 18 | 1.1.2.2 | Test bug fixes on STAGE |  | 5d | 2011-09-14 A | 2011-09-20 A |  | 100% |  |  |  |  |  |  |
| 19 | 1.1.2.3 | Regression testing on STAGE |  | 5d | 2011-09-21 A | 2011-09-27 A | 17 | 100% |  |  |  |  |  |  |
| 20 | 1.1.2.4 | Upload Release Artifacts |  | 2d | 2011-09-21 A | 2011-09-22 A | 17 | 100% |  |  |  |  |  |  |
| 21 | 1.1.2.5 | App Scan on STAGE |  | 3d | 2011-09-21 A | 2011-09-23 A | 17 | 100% |  |  |  |  |  |  |
| 22 | 1.1.2.6 | Add README_caArray_and_UPT.txt |  | 1d | 2011-09-26 A | 2011-09-26 A | 21 | 100% |  |  |  |  |  |  |
| 23 | 1.1.2.7 | Deploy to PRODUCTION |  | 5d | 2011-09-26 A | 2011-09-30 A | 22 | 100% |  |  |  |  |  |  |
| 24 | 1.2 | RELEASE 2.4.1 | milestone | 0d | 2011-09-30 A | 2011-09-30 A | 23 | 100% |  |  |  |  |  |  |

| ID | WBS | Task | Type | Duration | Start | Finish | Predecessors | Complete | Remaining | Total slack | Constraint | Resources | Work | Actual work |
| --- | --- | --- | --- | --- | --- | --- | --- | --- | --- | --- | --- | --- | --- | --- |
| 25 | 1.3 | **2.5.0 (rough LOEs)** |  | 150d | 2011-09-14 A | 2012-04-10 | 3 | 49% | 75.99d | 0d |  | Andrew; Quy; Rashmi | 3840h | 397.81h |
| 26 | 1.3.1 | Merge in plug-in arch, file system storage, Jboss5 and get local CI build working (ARRAY-1804, ARRAY-1595, ARRAY-1896) |  | 10d | 2011-09-14 A | 2011-09-27 A |  | 100% |  |  |  |  |  |  |
| 27 | 1.3.2 | BDALite: Migrate caArray build from Ivy to Nexus (ARRAY-2073) |  | 7d | 2011-09-28 A | 2011-10-06 A | 26 | 100% |  |  |  |  |  |  |
| 28 | 1.3.3 | BDALite: Artifact configuration at build time and PTE form (ARRAY-2067, ARRAY-1967) |  | 7d | 2011-09-28 A | 2011-10-06 A | 26 | 100% |  |  |  |  |  |  |
| 29 | 1.3.4 | BDALite: Migrate BDA build from Ivy to Nexus (ARRAY-2085) |  | 15d | 2011-10-07 A | 2011-10-27 A | 27 | 100% |  |  |  |  |  |  |
| 30 | 1.3.5 | BDALite: Migrate to AntHill Pro 3 - Prerequisites (ARRAY-2103, ARRAY-2121) |  | 15d | 2011-10-07 A | 2011-10-27 A | 28 | 100% |  |  |  |  |  |  |
| 31 | 1.3.6 | Curation Tier upgrade to 2.4.1 |  | 3d | 2011-10-28 A | 2011-11-01 A | 29 | 100% |  |  |  |  |  |  |
| 32 | 1.3.7 | Merge in 2.4.1 fixes into 2.5.0 (ARRAY-2069) |  | 5d | 2011-10-28 A | 2011-11-03 A | 29 | 100% |  |  |  |  |  |  |
| 33 | 1.3.8 | Get CI build tested and working (ARRAY-2021, 2120, 2122, 2123, 2064, 2122, 1960, 2152) |  | 10d | 2011-11-04 A | 2011-11-17 A | 32 | 100% |  |  |  |  |  |  |
| 34 | 1.3.9 | Jboss 5.1 / Java 6 upgrade - Fix Installer (ARRAY-1567, 2124, 2125, 2144, 2145, 2141, 2142, 2147, 2148) |  | 5d | 2011-11-11 A | 2011-11-17 A | 33 | 100% |  |  |  |  |  |  |
| 35 | 1.3.10 | File system storage of raw files (transaction spanning DB and filesystem) (ARRAY-1752) |  | 5d | 2011-11-18 A | 2011-11-24 A | 34 | 100% |  |  |  |  |  |  |
| 36 | 1.3.11 | Xenoline: Data analysis and meetings |  | 2d | 2011-11-18 A | 2011-11-21 A | 34 | 100% |  |  |  |  |  |  |
| 37 | 1.3.12 | TRANSCEND: Requirements meetings and test data set-up |  | 5d | 2011-11-18 A | 2011-11-24 A | 34 | 100% |  |  |  |  |  |  |
| 38 | 1.3.13 | Jboss 5.1 / Java 6 upgrade - Test 2.4.x to 2.5.0 migration path (ARRAY-2126, ARRAY-2127) |  | 5d | 2011-11-18 A | 2011-11-24 A | 34 | 100% |  |  |  |  |  |  |
| 39 | 1.3.14 | **Iteration M18** |  | 13d | 2011-11-25 A | 2011-12-13 | 38 | 72% | 3.64d | 0d |  |  | 240h | 184h |
| 40 | 1.3.14.1 | Bug fixes (ARRAY-2165,2166) |  | 3d | 2011-11-25 A | 2011-11-29 A |  | 100% |  |  |  | KK | 24h | 24h |
| 41 | 1.3.14.2 | BDALite: AHP 3 prerequisite: Standalone liquibase upgrades (ARRAY-2105) |  | 5d | 2011-11-30 A | 2011-12-06 A | 40 | 100% |  |  |  | KK | 40h | 40h |
| 42 | 1.3.14.3 | Orphaned experiments: Blocking issue for user (ARRAY-2183) |  | 5d | 2011-11-25 A | 2011-12-01 A |  | 100% |  |  |  | Rashmi | 40h | 40h |
| 43 | 1.3.14.4 | Design for large import splitting into multiple transactions (ARRAY-2146) |  | 5d | 2011-11-25 A | 2011-12-01 A |  | 100% |  |  |  | Todd; Rashmi | 80h | 80h |
| 44 | 1.3.14.5 | Bug fixes (ARRAY-2167,2149) |  | 5d | 2011-12-07 | 2011-12-13 | 41 |  |  | 0d |  | KK | 40h |  |
| 45 | 1.3.14.6 | Design for remote file locations (ARRAY-2156) |  | 2d | 2011-12-12 | 2011-12-13 |  |  |  | 0d | start no earlier than 2011-12-12 | Todd | 16h |  |
| 46 | 1.3.15 | **Iteration M19** |  | 10d | 2011-12-13 | 2011-12-27 | 39 |  |  | 0d |  |  |  |  |
| 47 | 1.3.15.1 | External Dependency: AntHill Pro 3 Tracks set up by Systems team (ARRAY-1968) | milestone | 0d | 2011-12-13 | 2011-12-13 | 30, 41 |  |  | 0d |  |  |  |  |
| 48 | 1.3.15.2 | Jboss 5.1 / Java 6 upgrade - Test 2.5.0 on NCI tiers (ARRAY-1809) |  | 5d | 2011-12-14 | 2011-12-20 | 47 |  |  | 0d |  |  |  |  |
| 49 | 1.3.15.3 | Splitting imports: Utility classes to generate child file sets |  | 2d | 2011-12-14 | 2011-12-15 |  |  |  | 3d |  |  |  |  |
| 50 | 1.3.15.4 | Splitting imports: MAGE-TAB Transaction Set data model and DAO |  | 3d | 2011-12-14 | 2011-12-16 |  |  |  | 82d |  |  |  |  |
| 51 | 1.3.15.5 | Splitting imports: State model and new states like "Partially Imported." |  | 2d | 2011-12-21 | 2011-12-22 | 48, 49, 50 |  |  | 3d |  |  |  |  |
| 52 | 1.3.15.6 | Splitting imports: Transaction handling of Validate and Import steps. |  | 3d | 2011-12-21 | 2011-12-23 | 48, 49, 50 |  |  | 2d |  |  |  |  |
| 53 | 1.3.15.7 | Splitting imports: Modify the import service to perform the splitting |  | 5d | 2011-12-21 | 2011-12-27 | 48, 49, 50 |  |  | 0d |  |  |  |  |

| ID | WBS | Task | Type | Duration | Start | Finish | Predecessors | Total slack |
| --- | --- | --- | --- | --- | --- | --- | --- | --- |
| 54 | 1.3.16 | **Iteration M20** |  | 10d | 2011-12-28 | 2012-01-10 | 46 | 0d |
| 55 | 1.3.16.1 | Design for Resumable Uploads |  | 5d | 2011-12-28 | 2012-01-03 |  | 3d |
| 56 | 1.3.16.2 | Splitting imports: Support multiple rows referencing the same data file |  | 3d | 2011-12-28 | 2011-12-30 |  | 5d |
| 57 | 1.3.16.3 | Splitting imports: Cancel parent import job even if a child has started. |  | 2d | 2011-12-28 | 2011-12-29 |  | 0d |
| 58 | 1.3.16.4 | Splitting imports: Resume manually cancelled import job |  | 3d | 2011-12-30 | 2012-01-03 | 57 | 0d |
| 59 | 1.3.16.5 | Splitting imports: Resume failed import with bad data files |  | 5d | 2012-01-04 | 2012-01-10 | 57, 58 | 0d |
| 60 | 1.3.16.6 | Splitting imports: Resume failed import with bad SDRF |  | 5d | 2012-01-04 | 2012-01-10 | 57, 58 | 0d |
| 61 | 1.3.17 | Resumable uploads (ARRAY-1899, ARRAY-1627) |  | 20d | 2012-01-11 | 2012-02-07 | 54 | 0d |
| 62 | 1.3.18 | Allow user to point to files rather than uploading/transferring (ARRAY-2005) |  | 5d | 2012-02-08 | 2012-02-14 | 61 | 0d |
| 63 | 1.3.19 | Backup and replication for file system - NCI tiers and local installer documentation (ARRAY-1809) |  | 5d | 2012-02-15 | 2012-02-21 | 62 | 0d |
| 64 | 1.3.20 | API (CQL) changes to account for file system storage (ARRAY-1806, ARRAY-1391) |  | 5d | 2012-02-22 | 2012-02-28 | 63 | 0d |
| 65 | 1.3.21 | Bug fixes |  | 20d | 2012-02-29 | 2012-03-27 | 64 | 0d |
| 66 | 1.3.22 | Deployment overhead |  | 10d | 2012-03-28 | 2012-04-10 | 65 | 0d |
| 67 | 1.4 | **PRODUCT BACKLOG (rough LOEs)** |  | 150d | 2012-04-11 | 2012-11-06 | 25 | 0d |
| 68 | 1.4.1 | **Grid Security (TRANSCEND)** |  | 40d | 2012-04-11 | 2012-06-05 |  | 0d |
| 69 | 1.4.1.1 | ARRAY-1463 - Login with caGrid account |  | 10d | 2012-04-11 | 2012-04-24 |  | 0d |
| 70 | 1.4.1.2 | ARRAY-1928 - Migrate CSM to Grid accounts |  | 5d | 2012-04-25 | 2012-05-01 | 69 | 0d |
| 71 | 1.4.1.3 | ARRAY-1353 - Grid authentication in remote Java API |  | 10d | 2012-05-02 | 2012-05-15 | 70 | 0d |
| 72 | 1.4.1.4 | ARRAY-1462 - Installer/build infrastructure for secure Grid |  | 15d | 2012-05-16 | 2012-06-05 | 71 | 0d |
| 73 | 1.4.1.5 | ARRAY-1929 - Grid Grouper (NICE TO HAVE) | milestone | 0d | 2012-06-05 | 2012-06-05 | 72 | 0d |
| 74 | 1.4.1.6 | ARRAY-1472 - Bulk migration of LDAP to Grid (NICE TO HAVE) | milestone | 0d | 2012-06-05 | 2012-06-05 | 73 | 0d |
| 75 | 1.4.2 | **Single Sign-on (TRANSCEND)** |  | 20d | 2012-06-06 | 2012-07-03 | 68 | 0d |
| 76 | 1.4.2.1 | ARRAY-1930 |  | 20d | 2012-06-06 | 2012-07-03 |  | 0d |
| 77 | 1.4.3 | **Audit Trail (TRANSCEND)** |  | 20d | 2012-07-04 | 2012-07-31 | 75 | 0d |
| 78 | 1.4.3.1 | ARRAY-1931 - Sample deletions and data imports |  | 10d | 2012-07-04 | 2012-07-17 |  | 0d |
| 79 | 1.4.3.2 | ARRAY-1933 - Log visibility to Data Owner |  | 5d | 2012-07-18 | 2012-07-24 | 78 | 0d |
| 80 | 1.4.3.3 | ARRAY-1932 - Publish log |  | 5d | 2012-07-25 | 2012-07-31 | 79 | 0d |

| ID | WBS | Task | Type | Duration | Start | Finish | Predecessors | Total slack |
| --- | --- | --- | --- | --- | --- | --- | --- | --- |
| 81 | 1.4.4 | **File-level permissions for role-based security (TRANSCEND)** |  | 20d | 2012-08-01 | 2012-08-28 | 77 | 0d |
| 82 | 1.4.4.1 | ARRAY-1938 |  | 20d | 2012-08-01 | 2012-08-28 |  | 0d |
| 83 | 1.4.5 | **Maintenance and Bug Fixes** |  | 10d | 2012-08-29 | 2012-09-11 | 81 | 0d |
| 84 | 1.4.5.1 | Collaborator Group Defect |  | 10d | 2012-08-29 | 2012-09-11 |  | 0d |
| 85 | 1.4.5.2 | Expand unparsed file types (NICE TO HAVE) | milestone | 0d | 2012-09-11 | 2012-09-11 | 84 | 0d |
| 86 | 1.4.5.3 | IE 8 UI bugs (NICE TO HAVE) | milestone | 0d | 2012-09-11 | 2012-09-11 | 85 | 0d |
| 87 | 1.4.5.4 | MAGE-TAB v1.1 support (NICE TO HAVE) | milestone | 0d | 2012-09-11 | 2012-09-11 | 86 | 0d |
| 88 | 1.4.5.5 | Clean up duplicate terms (NICE TO HAVE) | milestone | 0d | 2012-09-11 | 2012-09-11 | 87 | 0d |
| 89 | 1.4.5.6 | Import verification to prevent unintentional biomaterial/term creation (NICE TO HAVE) | milestone | 0d | 2012-09-11 | 2012-09-11 | 88 | 0d |
| 90 | 1.4.5.7 | Prevent multiple hybs to 1 file association (NICE TO HAVE) | milestone | 0d | 2012-09-11 | 2012-09-11 | 89 | 0d |
| 91 | 1.4.5.8 | Fix SDRF export of multiple derived data file columns (NICE TO HAVE) | milestone | 0d | 2012-09-11 | 2012-09-11 | 90 | 0d |
| 92 | 1.4.5.9 | Fix LSIDs for unparsed array designs (NICE TO HAVE) | milestone | 0d | 2012-09-11 | 2012-09-11 | 91 | 0d |
| 93 | 1.4.6 | **Release Overhead for TRANSCEND release** |  | 40d | 2012-09-12 | 2012-11-06 | 83 | 0d |
| 94 | 1.4.6.1 | Bug fixes |  | 30d | 2012-09-12 | 2012-10-23 |  | 0d |
| 95 | 1.4.6.2 | Deployment overhead |  | 10d | 2012-10-24 | 2012-11-06 | 94 | 0d |
